# Diplomarbeit

How a schedule from Planner changed from version to version. A marks actual dates.

## Version 1 (saved 2018-07-09)

Note of the change: add a planner file

| ID | WBS | Task | Duration | Start | Finish | Predecessors | Constraint |
| --- | --- | --- | --- | --- | --- | --- | --- |
| 1 | 1 | **Vorphase** |  | 2018-10-29 | 2018-10-27 |  |  |
| 2 |  | Diplomantrag abgeben | 0d | 2018-10-29 | 2018-10-27 |  | must start on 2018-10-27 |
| 3 | 2 | **Planung** |  | 2018-12-10 | 2018-12-28 |  |  |
| 4 |  | Start Diplomarbeit | 0d | 2018-12-10 | 2018-12-10 |  | must start on 2018-12-10 |
| 5 |  | Placeholder1 | 15d | 2018-12-10 | 2018-12-28 | 4 | start no earlier than 2018-12-10 |
| 6 | 3 | **Durchführung** |  | 2018-12-31 | 2019-02-25 | 5 |  |
| 7 |  | Placeholder2 | 40d | 2018-12-31 | 2019-02-22 |  | start no earlier than 2018-12-10 |
| 8 |  | Testing | 1d | 2019-02-25 | 2019-02-25 | 7 |  |
| 9 | 4 | **Abschluss** |  | 2019-02-26 | 2019-04-26 | 8 |  |
| 10 |  | Arbeit korrigieren | 14d | 2019-02-26 | 2019-03-15 |  |  |
| 11 |  | Diplomarbeit abgeben | 0d | 2019-03-18 | 2019-03-18 |  | must start on 2019-03-18 |
| 12 |  | Präsentationen | 14d | 2019-03-25 | 2019-04-11 | 11 | start no earlier than 2019-03-25 |
| 13 |  | Ausstellung | 0d | 2019-04-29 | 2019-04-27 |  | must start on 2019-04-27 |

## Version 2 (saved 2018-12-10)

Note of the change: update the time planning

Last finish 2019-04-27 → 2019-04-28 (+1d).

Added:

| ID | Task | Duration | Start | Finish | Predecessors | Constraint | Resources |
| --- | --- | --- | --- | --- | --- | --- | --- |
| 3 | Zeitplan erarbeiten |  | 2018-12-10 | 2018-12-12 |  | must start on 2018-12-10 | Andreas Zweili |
| 4 | Ziele dokumentieren |  | 2018-12-12 | 2018-12-16 | 3 |  | Andreas Zweili |
| 6 | Lösungsvarianten erfassen |  | 2018-12-16 | 2018-12-16 | 4 |  | Andreas Zweili |
| 10 | **Umweltanalyse erstellen** |  | 2018-12-22 | 2018-12-23 |  |  |  |
| 11 | Stakeholder Diagramm erstellen |  | 2018-12-22 | 2018-12-23 | 9 |  | Andreas Zweili |
| 14 | Risiken bewerten |  | 2018-12-23 | 2018-12-23 | 13 |  | Andreas Zweili |
| 15 | Massnahmen Katalog erarbeiten |  | 2018-12-23 | 2018-12-25 | 14 |  | Andreas Zweili |
| 16 | Meeting #1 | 0d | 2018-12-28 | 2018-12-28 |  | must start on 2018-12-28 | Andreas Zweili |
| 18 | User Stories erarbeiten |  | 2018-12-25 | 2018-12-25 | 15 |  | Andreas Zweili |
| 19 | **Use Cases erarbeiten** |  | 2018-12-25 | 2018-12-27 |  |  |  |
| 20 | Use Case Diagramm erstellen |  | 2018-12-25 | 2018-12-26 | 18 |  | Andreas Zweili |
| 21 | Use Cases ausarbeiten |  | 2018-12-27 | 2018-12-27 | 20 |  | Andreas Zweili |
| 22 | **UI** |  | 2018-12-28 | 2019-01-02 |  |  |  |
| 23 | UI Test ausarbeiten |  | 2018-12-28 | 2018-12-28 | 21 |  | Andreas Zweili |
| 24 | UI ausarbeiten |  | 2018-12-29 | 2018-12-29 | 23 |  | Andreas Zweili |
| 25 | UI von Usern testen lassen |  | 2018-12-30 | 2018-12-30 | 24 |  | Andreas Zweili |
| 26 | UI Test Resultate auswerten |  | 2018-12-30 | 2018-12-31 | 25 |  | Andreas Zweili |
| 27 | UI anpassen |  | 2018-12-31 | 2019-01-02 | 26 |  | Andreas Zweili |
| 28 | **Testing** | 19.25d | 2019-01-02 | 2019-02-04 |  |  |  |
| 29 | Testfälle erstellen |  | 2019-01-02 | 2019-01-03 | 27 |  | Andreas Zweili |
| 30 | Meeting #2 | 0d | 2019-02-01 | 2019-02-01 |  | must start on 2019-02-01 | Andreas Zweili |
| 31 | Testfälle anwenden |  | 2019-02-02 | 2019-02-04 | 46 |  |  |
| 32 | Github Repository erstellen |  | 2019-01-04 | 2019-01-04 | 29 |  | Andreas Zweili |
| 33 | **Coding** |  | 2019-01-04 | 2019-02-01 |  |  |  |
| 34 | Backend Read Config Funktion |  | 2019-01-04 | 2019-01-05 | 32 |  | Andreas Zweili |
| 35 | Frontend Read Config Funktion |  | 2019-01-05 | 2019-01-06 | 34 |  | Andreas Zweili |
| 36 | Backend Write Config Funktion |  | 2019-01-06 | 2019-01-07 | 35 |  | Andreas Zweili |
| 37 | Frontend Write Config Funktion |  | 2019-01-08 | 2019-01-11 | 36 |  | Andreas Zweili |
| 38 | Backend Backup Funktion |  | 2019-01-13 | 2019-01-13 | 37 |  | Andreas Zweili |
| 39 | Frontend Backup Funktion |  | 2019-01-14 | 2019-01-14 | 38 |  | Andreas Zweili |
| 40 | Backend Restore Funktion |  | 2019-01-15 | 2019-01-18 | 39 |  | Andreas Zweili |
| 41 | Frontend Restore Funktion |  | 2019-01-19 | 2019-01-19 | 40 |  | Andreas Zweili |
| 42 | Backend Mounting Funktion |  | 2019-01-20 | 2019-01-20 | 41 |  | Andreas Zweili |
| 43 | Frontend Mounting Funktion |  | 2019-01-21 | 2019-01-21 | 42 |  | Andreas Zweili |
| 44 | Backend Delete Funktion |  | 2019-01-22 | 2019-01-25 | 43 |  | Andreas Zweili |
| 45 | Frontend Delete Funktion |  | 2019-01-26 | 2019-01-26 | 44 |  | Andreas Zweili |
| 46 | Coding Filler |  | 2019-01-27 | 2019-02-01 | 45 |  | Andreas Zweili |
| 47 | Meeting #3 | 0d | 2019-03-01 | 2019-03-01 |  | must start on 2019-03-01 | Andreas Zweili |
| 50 | Präsentation | 0d | 2019-04-02 | 2019-04-02 | 49 | start no earlier than 2019-04-02 | Andreas Zweili |
| 51 | **Ausstellung** |  | 2019-03-31 | 2019-04-28 |  | must start on 2019-04-27 |  |
| 52 | Ausstellung vorbereiten | 10d | 2019-03-31 | 2019-04-28 |  | start no earlier than 2019-03-31 |  |
| 53 | Arbeit ausstellen | 0d | 2019-04-28 | 2019-04-27 |  | must start on 2019-04-27 | Andreas Zweili |

Removed: 1 Vorphase; 2 Diplomantrag abgeben

Changed:

| ID | Task | Start | Finish | Duration | Predecessors | Other |
| --- | --- | --- | --- | --- | --- | --- |
| 2 | **Planung** |  | 2018-12-28 → 2018-12-27 (-1d) |  |  |  |
| 5 | **Lösungsvariante erarbeiten** | 2018-12-10 → 2018-12-16 (+6d) | 2018-12-28 → 2018-12-22 (-6d) | 15d → 2.12d | 1 → none | was named Placeholder1; resources Andreas Zweili [38%] → none |
| 7 | Lösungsvarianten bewerten | 2018-12-31 → 2018-12-16 (-15d) | 2019-02-22 → 2018-12-20 (-64d) | 40d → none | none → 6 | was named Placeholder2; constraint start no earlier than 2018-12-10 → none; resources Andreas Zweili [38%] → Andreas Zweili |
| 8 | Lösungsvariante bestimmen | 2019-02-25 → 2018-12-20 (-67d) | 2019-02-25 → 2018-12-22 (-65d) | 1d → none |  | was named Testing |
| 9 | SWOT Analyse erstellen | 2019-02-26 → 2018-12-22 (-66d) | 2019-04-26 → 2018-12-22 (-125d) |  |  | was named Abschluss; resources none → Andreas Zweili |
| 12 | **Risikoanalyse erstellen** | 2019-03-25 → 2018-12-23 (-92d) | 2019-04-11 → 2018-12-25 (-107d) | 14d → none | 49 → none | was named Präsentationen; constraint start no earlier than 2019-03-25 → none; resources Andreas Zweili [7%] → none |
| 13 | Risiken erfassen | 2019-04-29 → 2018-12-23 (-127d) | 2019-04-27 → 2018-12-23 (-125d) | 0d → none | none → 11 | was named Ausstellung; constraint must start on 2019-04-27 → none |
| 17 | **Durchführung** | 2018-12-31 → 2018-12-25 (-6d) | 2019-02-25 → 2019-03-10 (+13d) |  | 5 → none |  |
| 48 | Arbeit korrigieren | 2019-02-26 → 2019-03-04 (+6d) | 2019-03-15 → 2019-03-10 (-5d) | 14d → none |  | constraint none → start no earlier than 2019-03-04; resources Andreas Zweili [38%] → Andreas Zweili |
| 49 | Diplomarbeit abgeben |  |  |  |  | resources Andreas Zweili → Andreas Zweili [0%] |

## Version 3 (saved 2018-12-10)

Note of the change: update time plan

Last finish 2019-04-28 → 2019-04-27 (-1d).

Changed:

| ID | Task | Start | Finish | Duration |
| --- | --- | --- | --- | --- |
| 51 | **Ausstellung** |  | 2019-04-28 → 2019-04-26 (-2d) |  |
| 52 | Ausstellung vorbereiten |  | 2019-04-28 → 2019-04-26 (-2d) | 10d → 9d |
| 53 | Arbeit ausstellen | 2019-04-28 → 2019-04-27 (-1d) |  |  |

## Version 4 (saved 2018-12-17)

Note of the change: add Konfigurationsmanagement and Projektmethode to Gantt Chart

Last finish stays 2019-04-27.

Added:

| ID | Task | Start | Finish | Predecessors |
| --- | --- | --- | --- | --- |
| 48 | Konfigurationsmanagement beschreiben | 2019-02-04 | 2019-02-04 | 31 |
| 49 | Projektmethode beschreiben | 2019-02-05 | 2019-02-05 | 48 |

Changed:

| ID | Task | Start | Finish |
| --- | --- | --- | --- |
| 7 | Lösungsvarianten bewerten |  | 2018-12-20 → 2018-12-21 (+1d) |
| 8 | Lösungsvariante bestimmen | 2018-12-20 → 2018-12-21 (+1d) |  |
| 10 | **Umweltanalyse erstellen** | 2018-12-22 → 2018-12-23 (+1d) |  |
| 11 | Stakeholder Diagramm erstellen | 2018-12-22 → 2018-12-23 (+1d) |  |
| 14 | Risiken bewerten |  | 2018-12-23 → 2018-12-24 (+1d) |
| 15 | Massnahmen Katalog erarbeiten | 2018-12-23 → 2018-12-24 (+1d) |  |
| 19 | **Use Cases erarbeiten** | 2018-12-25 → 2018-12-26 (+1d) | 2018-12-27 → 2018-12-28 (+1d) |
| 20 | Use Case Diagramm erstellen | 2018-12-25 → 2018-12-26 (+1d) | 2018-12-26 → 2018-12-27 (+1d) |
| 21 | Use Cases ausarbeiten |  | 2018-12-27 → 2018-12-28 (+1d) |
| 23 | UI Test ausarbeiten |  | 2018-12-28 → 2018-12-29 (+1d) |
| 24 | UI ausarbeiten |  | 2018-12-29 → 2018-12-30 (+1d) |
| 26 | UI Test Resultate auswerten |  | 2018-12-31 → 2019-01-02 (+2d) |
| 27 | UI anpassen | 2018-12-31 → 2019-01-02 (+2d) |  |
| 29 | Testfälle erstellen |  | 2019-01-03 → 2019-01-04 (+1d) |
| 33 | **Coding** |  | 2019-02-01 → 2019-02-02 (+1d) |
| 36 | Backend Write Config Funktion |  | 2019-01-07 → 2019-01-08 (+1d) |
| 37 | Frontend Write Config Funktion | 2019-01-08 → 2019-01-09 (+1d) | 2019-01-11 → 2019-01-13 (+2d) |
| 38 | Backend Backup Funktion |  | 2019-01-13 → 2019-01-14 (+1d) |
| 39 | Frontend Backup Funktion |  | 2019-01-14 → 2019-01-15 (+1d) |
| 40 | Backend Restore Funktion | 2019-01-15 → 2019-01-16 (+1d) | 2019-01-18 → 2019-01-19 (+1d) |
| 41 | Frontend Restore Funktion |  | 2019-01-19 → 2019-01-20 (+1d) |
| 42 | Backend Mounting Funktion |  | 2019-01-20 → 2019-01-21 (+1d) |
| 43 | Frontend Mounting Funktion |  | 2019-01-21 → 2019-01-22 (+1d) |
| 44 | Backend Delete Funktion | 2019-01-22 → 2019-01-23 (+1d) | 2019-01-25 → 2019-01-26 (+1d) |
| 45 | Frontend Delete Funktion |  | 2019-01-26 → 2019-01-27 (+1d) |
| 46 | Coding Filler |  | 2019-02-01 → 2019-02-02 (+1d) |

## Version 5 (saved 2018-12-24)

Note of the change: update the time management

Last finish stays 2019-04-27.

Added:

| ID | Task | Duration | Start | Finish | Constraint | Resources |
| --- | --- | --- | --- | --- | --- | --- |
| 48 | **Meeting #1** | 1.38d | 2018-12-23 | 2018-12-25 | must start on 2018-12-23 |  |
| 49 | Meeting abhalten |  | 2018-12-23 | 2018-12-23 | must start on 2018-12-23 |  |
| 50 | Nacharbeiten |  | 2018-12-24 | 2018-12-25 | must start on 2018-12-24 | Andreas Zweili |
| 51 | **Meeting #2** | 1.38d | 2019-01-26 | 2019-01-27 | must start on 2019-01-26 |  |
| 52 | Meeting abhalten |  | 2019-01-26 | 2019-01-26 | must start on 2019-01-26 | Andreas Zweili |
| 53 | Nacharbeiten |  | 2019-01-27 | 2019-01-27 | must start on 2019-01-27 | Andreas Zweili |
| 54 | **Meeting #3** | 0.62d | 2019-02-28 | 2019-03-02 | must start on 2019-02-28 |  |
| 55 | Meeting abhalten |  | 2019-02-28 | 2019-02-28 | must start on 2019-02-28 | Andreas Zweili |
| 56 | Nacharbeiten |  | 2019-03-01 | 2019-03-02 | must start on 2019-03-01 | Andreas Zweili |

Removed: 16 Meeting #1; 30 Meeting #2; 47 Meeting #3

Changed:

| ID | Task | Start | Finish | Predecessors |
| --- | --- | --- | --- | --- |
| 12 | **Risikoanalyse erstellen** | 2018-12-23 → 2018-12-25 (+2d) | 2018-12-25 → 2018-12-27 (+2d) |  |
| 13 | Risiken erfassen | 2018-12-23 → 2018-12-25 (+2d) | 2018-12-23 → 2018-12-25 (+2d) | 11 → 50 |
| 14 | Risiken bewerten | 2018-12-23 → 2018-12-25 (+2d) | 2018-12-24 → 2018-12-25 (+1d) |  |
| 15 | Massnahmen Katalog erarbeiten | 2018-12-24 → 2018-12-25 (+1d) | 2018-12-25 → 2018-12-27 (+2d) |  |
| 16 | **Durchführung** | 2018-12-25 → 2018-12-27 (+2d) |  |  |
| 17 | User Stories erarbeiten | 2018-12-25 → 2018-12-27 (+2d) | 2018-12-25 → 2018-12-27 (+2d) |  |
| 18 | **Use Cases erarbeiten** | 2018-12-26 → 2018-12-27 (+1d) | 2018-12-28 → 2018-12-29 (+1d) |  |
| 19 | Use Case Diagramm erstellen | 2018-12-26 → 2018-12-27 (+1d) | 2018-12-27 → 2018-12-28 (+1d) |  |
| 20 | Use Cases ausarbeiten | 2018-12-27 → 2018-12-28 (+1d) | 2018-12-28 → 2018-12-29 (+1d) |  |
| 21 | **UI** | 2018-12-28 → 2018-12-29 (+1d) | 2019-01-02 → 2019-01-03 (+1d) |  |
| 22 | UI Test ausarbeiten | 2018-12-28 → 2018-12-29 (+1d) | 2018-12-29 → 2018-12-30 (+1d) |  |
| 23 | UI ausarbeiten | 2018-12-29 → 2018-12-30 (+1d) | 2018-12-30 → 2018-12-31 (+1d) |  |
| 24 | UI von Usern testen lassen | 2018-12-30 → 2019-01-02 (+3d) | 2018-12-30 → 2019-01-02 (+3d) |  |
| 25 | UI Test Resultate auswerten | 2018-12-30 → 2019-01-02 (+3d) | 2019-01-02 → 2019-01-03 (+1d) |  |
| 26 | UI anpassen | 2019-01-02 → 2019-01-03 (+1d) | 2019-01-02 → 2019-01-03 (+1d) |  |
| 27 | **Testing** | 2019-01-02 → 2019-01-03 (+1d) | 2019-02-04 → 2019-02-07 (+3d) |  |
| 28 | Testfälle erstellen | 2019-01-02 → 2019-01-03 (+1d) | 2019-01-04 → 2019-01-05 (+1d) |  |
| 29 | Testfälle anwenden | 2019-02-02 → 2019-02-03 (+1d) | 2019-02-04 → 2019-02-07 (+3d) |  |
| 30 | Github Repository erstellen | 2019-01-04 → 2019-01-05 (+1d) | 2019-01-04 → 2019-01-05 (+1d) |  |
| 31 | **Coding** | 2019-01-04 → 2019-01-05 (+1d) | 2019-02-02 → 2019-02-03 (+1d) |  |
| 32 | Backend Read Config Funktion | 2019-01-04 → 2019-01-05 (+1d) | 2019-01-05 → 2019-01-06 (+1d) |  |
| 33 | Frontend Read Config Funktion | 2019-01-05 → 2019-01-06 (+1d) | 2019-01-06 → 2019-01-08 (+2d) |  |
| 34 | Backend Write Config Funktion | 2019-01-06 → 2019-01-09 (+3d) | 2019-01-08 → 2019-01-13 (+5d) |  |
| 35 | Frontend Write Config Funktion | 2019-01-09 → 2019-01-13 (+4d) | 2019-01-13 → 2019-01-14 (+1d) |  |
| 36 | Backend Backup Funktion | 2019-01-13 → 2019-01-14 (+1d) | 2019-01-14 → 2019-01-15 (+1d) |  |
| 37 | Frontend Backup Funktion | 2019-01-14 → 2019-01-16 (+2d) | 2019-01-15 → 2019-01-19 (+4d) |  |
| 38 | Backend Restore Funktion | 2019-01-16 → 2019-01-19 (+3d) | 2019-01-19 → 2019-01-20 (+1d) |  |
| 39 | Frontend Restore Funktion | 2019-01-19 → 2019-01-20 (+1d) | 2019-01-20 → 2019-01-21 (+1d) |  |
| 40 | Backend Mounting Funktion | 2019-01-20 → 2019-01-21 (+1d) | 2019-01-21 → 2019-01-22 (+1d) |  |
| 41 | Frontend Mounting Funktion | 2019-01-21 → 2019-01-23 (+2d) | 2019-01-22 → 2019-01-26 (+4d) |  |
| 42 | Backend Delete Funktion | 2019-01-23 → 2019-01-26 (+3d) | 2019-01-26 → 2019-01-27 (+1d) |  |
| 43 | Frontend Delete Funktion | 2019-01-26 → 2019-01-27 (+1d) | 2019-01-27 → 2019-01-28 (+1d) |  |
| 44 | Coding Filler | 2019-01-27 → 2019-01-28 (+1d) | 2019-02-02 → 2019-02-03 (+1d) |  |
| 45 | Konfigurationsmanagement beschreiben | 2019-02-04 → 2019-02-08 (+4d) | 2019-02-04 → 2019-02-08 (+4d) |  |
| 46 | Projektmethode beschreiben | 2019-02-05 → 2019-02-09 (+4d) | 2019-02-05 → 2019-02-09 (+4d) |  |

## Version 6 (saved 2018-12-24)

Note of the change: update time plan

Last finish stays 2019-04-27.

Added:

| ID | Task | Start | Finish | Resources |
| --- | --- | --- | --- | --- |
| 7 | Abgrenzung definieren | 2018-12-10 | 2018-12-10 | Andreas Zweili |
| 8 | **Controlling** | 2018-12-10 | 2018-12-10 |  |
| 9 | Zeitmanagement | 2018-12-10 | 2018-12-10 | Andreas Zweili |
| 11 | Kosten | 2018-12-10 | 2018-12-10 | Andreas Zweili |
| 12 | **Analyse** | 2018-12-10 | 2018-12-29 |  |
| 13 | Ist-Analyse erstellen | 2018-12-10 | 2018-12-13 |  |
| 14 | Soll-Analyse erstellen | 2018-12-10 | 2018-12-13 |  |
| 25 | UML | 2018-12-10 | 2018-12-13 |  |
| 26 | Anforderungskatagol erstellen | 2018-12-10 | 2018-12-13 |  |
| 27 | **Konzept** | 2018-12-10 | 2019-01-05 |  |
| 33 | Testkonzept beschreiben | 2018-12-10 | 2018-12-12 |  |
| 35 | **Realisierung** | 2018-12-29 | 2019-02-07 |  |
| 58 | **Ausblick** | 2018-12-10 | 2018-12-11 |  |
| 59 | Gelerntes erfassen | 2018-12-10 | 2018-12-11 | Andreas Zweili |
| 60 | Allgemeines Fazit | 2018-12-10 | 2018-12-10 | Andreas Zweili |
| 61 | Risiken Anhand der Arbeit bewerten | 2018-12-10 | 2018-12-10 | Andreas Zweili |

Removed: 16 Durchführung

Changed:

| ID | Task | Start | Finish | Duration | Predecessors | Other |
| --- | --- | --- | --- | --- | --- | --- |
| 2 | **Initialisierung** |  | 2018-12-27 → 2019-02-09 (+44d) |  |  | was named Planung |
| 5 | Konfigurationsmanagement beschreiben |  |  |  |  | resources none → Andreas Zweili |
| 6 | Projektmethode beschreiben |  |  |  |  | resources none → Andreas Zweili |
| 10 | Ressourcen | 2018-12-23 → 2018-12-10 (-13d) | 2018-12-23 → 2018-12-10 (-13d) |  |  | was named Umweltanalyse erstellen; resources none → Andreas Zweili |
| 15 | SWOT Analyse erstellen | 2018-12-22 → 2018-12-10 (-12d) | 2018-12-22 → 2018-12-12 (-10d) |  | 31 → none |  |
| 16 | Stakeholder Diagramm erstellen | 2018-12-23 → 2018-12-10 (-13d) | 2018-12-23 → 2018-12-11 (-12d) |  | 15 → none |  |
| 32 | **Testing** | 2019-01-03 → 2018-12-10 (-24d) | 2019-02-07 → 2019-01-05 (-33d) | 19.25d → 14d |  |  |

## Version 7 (saved 2018-12-24)

Note of the change: reorder all this shit...

Last finish stays 2019-04-27.

Added:

| ID | Task | Duration | Start | Finish | Predecessors |
| --- | --- | --- | --- | --- | --- |
| 12 | Initialisierung abgeschlossen | 0d | 2018-12-19 | 2018-12-19 | 11 |
| 28 | Analyse abgeschlossen | 0d | 2018-12-30 | 2018-12-30 | 27 |
| 37 | Konzeptionierung abgeschlossen | 0d | 2019-01-05 | 2019-01-05 | 36 |
| 61 | Realisierung abgeschlossen | 0d | 2019-02-14 | 2019-02-14 | 60 |
| 66 | Ausblick abgeschlossen | 0d | 2019-02-17 | 2019-02-17 | 65 |

Changed:

| ID | Task | Start | Finish | Duration | Predecessors | Other |
| --- | --- | --- | --- | --- | --- | --- |
| 2 | **Initialisierung** |  | 2019-02-09 → 2018-12-19 (-52d) |  |  |  |
| 3 | Ziele dokumentieren | 2018-12-12 → 2018-12-10 (-2d) | 2018-12-16 → 2018-12-12 (-4d) |  | 7 → none | constraint none → must start on 2018-12-10 |
| 4 | Abgrenzung definieren | 2018-12-10 → 2018-12-12 (+2d) | 2018-12-10 → 2018-12-13 (+3d) |  | none → 3 |  |
| 5 | Konfigurationsmanagement beschreiben | 2019-02-08 → 2018-12-13 (-57d) | 2019-02-08 → 2018-12-16 (-54d) |  | 60 → 4 |  |
| 6 | Projektmethode beschreiben | 2019-02-09 → 2018-12-16 (-55d) | 2019-02-09 → 2018-12-16 (-55d) |  |  |  |
| 7 | Zeitplan erarbeiten | 2018-12-10 → 2018-12-16 (+6d) | 2018-12-12 → 2018-12-16 (+4d) |  | none → 6 | constraint must start on 2018-12-10 → none |
| 8 | **Controlling** | 2018-12-10 → 2018-12-17 (+7d) | 2018-12-10 → 2018-12-19 (+9d) |  |  |  |
| 9 | Zeitmanagement | 2018-12-10 → 2018-12-17 (+7d) | 2018-12-10 → 2018-12-17 (+7d) |  | none → 7 |  |
| 10 | Ressourcen | 2018-12-10 → 2018-12-18 (+8d) | 2018-12-10 → 2018-12-18 (+8d) |  | none → 9 |  |
| 11 | Kosten | 2018-12-10 → 2018-12-19 (+9d) | 2018-12-10 → 2018-12-19 (+9d) |  | none → 10 |  |
| 13 | **Analyse** | 2018-12-10 → 2018-12-21 (+11d) | 2018-12-29 → 2018-12-30 (+1d) |  |  |  |
| 14 | Ist-Analyse erstellen | 2018-12-10 → 2018-12-21 (+11d) | 2018-12-13 → 2018-12-21 (+8d) |  | none → 12 | resources none → Andreas Zweili |
| 15 | Soll-Analyse erstellen | 2018-12-10 → 2018-12-22 (+12d) | 2018-12-13 → 2018-12-22 (+9d) |  | none → 14 | resources none → Andreas Zweili |
| 16 | SWOT Analyse erstellen | 2018-12-10 → 2018-12-22 (+12d) | 2018-12-12 → 2018-12-22 (+10d) |  | none → 15 |  |
| 17 | Stakeholder Diagramm erstellen | 2018-12-10 → 2018-12-22 (+12d) | 2018-12-11 → 2018-12-22 (+11d) |  | none → 16 |  |
| 26 | Anforderungskatalog erstellen | 2018-12-10 → 2018-12-29 (+19d) | 2018-12-13 → 2018-12-29 (+16d) |  | none → 25 | was named Anforderungskatagol erstellen; resources none → Andreas Zweili |
| 27 | UML | 2018-12-10 → 2018-12-29 (+19d) | 2018-12-13 → 2018-12-30 (+17d) |  | none → 26 | resources none → Andreas Zweili |
| 29 | **Konzept** | 2018-12-10 → 2018-12-30 (+20d) |  |  |  |  |
| 30 | **Lösungsvariante erarbeiten** | 2018-12-16 → 2018-12-30 (+14d) | 2018-12-22 → 2019-01-03 (+12d) |  |  |  |
| 31 | Lösungsvarianten erfassen | 2018-12-16 → 2018-12-30 (+14d) | 2018-12-16 → 2018-12-31 (+15d) |  | 3 → 28 |  |
| 32 | Lösungsvarianten bewerten | 2018-12-16 → 2018-12-31 (+15d) | 2018-12-21 → 2019-01-02 (+12d) |  |  |  |
| 33 | Lösungsvariante bestimmen | 2018-12-21 → 2019-01-02 (+12d) | 2018-12-22 → 2019-01-03 (+12d) |  |  |  |
| 34 | **Testing** | 2018-12-10 → 2019-01-03 (+24d) |  | 14d → 2.12d |  |  |
| 35 | Testkonzept beschreiben | 2018-12-10 → 2019-01-03 (+24d) | 2018-12-12 → 2019-01-03 (+22d) |  | none → 33 | resources none → Andreas Zweili |
| 36 | Testfälle erstellen | 2019-01-03 → 2019-01-04 (+1d) |  |  | 45 → 35 |  |
| 38 | **Realisierung** | 2018-12-29 → 2019-01-05 (+7d) | 2019-02-07 → 2019-02-14 (+7d) |  |  |  |
| 39 | Github Repository erstellen |  |  |  | 36 → 37 |  |
| 40 | **UI** | 2018-12-29 → 2019-01-05 (+7d) | 2019-01-03 → 2019-01-14 (+11d) |  |  |  |
| 41 | UI ausarbeiten | 2018-12-30 → 2019-01-05 (+6d) | 2018-12-31 → 2019-01-06 (+6d) |  | 42 → 39 |  |
| 42 | UI Test ausarbeiten | 2018-12-29 → 2019-01-06 (+8d) | 2018-12-30 → 2019-01-09 (+10d) |  | 25 → 41 |  |
| 43 | UI von Usern testen lassen | 2019-01-02 → 2019-01-10 (+8d) | 2019-01-02 → 2019-01-13 (+11d) |  | 41 → 42 |  |
| 44 | UI Test Resultate auswerten | 2019-01-02 → 2019-01-13 (+11d) | 2019-01-03 → 2019-01-13 (+10d) |  |  |  |
| 45 | UI anpassen | 2019-01-03 → 2019-01-13 (+10d) | 2019-01-03 → 2019-01-14 (+11d) |  |  |  |
| 46 | **Coding** | 2019-01-05 → 2019-01-14 (+9d) | 2019-02-03 → 2019-02-10 (+7d) |  |  |  |
| 47 | Backend Read Config Funktion | 2019-01-05 → 2019-01-14 (+9d) | 2019-01-06 → 2019-01-15 (+9d) |  | 39 → 45 |  |
| 48 | Frontend Read Config Funktion | 2019-01-06 → 2019-01-16 (+10d) | 2019-01-08 → 2019-01-19 (+11d) |  |  |  |
| 49 | Backend Write Config Funktion | 2019-01-09 → 2019-01-19 (+10d) | 2019-01-13 → 2019-01-20 (+7d) |  |  |  |
| 50 | Frontend Write Config Funktion | 2019-01-13 → 2019-01-20 (+7d) | 2019-01-14 → 2019-01-21 (+7d) |  |  |  |
| 51 | Backend Backup Funktion | 2019-01-14 → 2019-01-21 (+7d) | 2019-01-15 → 2019-01-22 (+7d) |  |  |  |
| 52 | Frontend Backup Funktion | 2019-01-16 → 2019-01-23 (+7d) | 2019-01-19 → 2019-01-26 (+7d) |  |  |  |
| 53 | Backend Restore Funktion | 2019-01-19 → 2019-01-26 (+7d) | 2019-01-20 → 2019-01-27 (+7d) |  |  |  |
| 54 | Frontend Restore Funktion | 2019-01-20 → 2019-01-27 (+7d) | 2019-01-21 → 2019-01-28 (+7d) |  |  |  |
| 55 | Backend Mounting Funktion | 2019-01-21 → 2019-01-28 (+7d) | 2019-01-22 → 2019-01-29 (+7d) |  |  |  |
| 56 | Frontend Mounting Funktion | 2019-01-23 → 2019-01-30 (+7d) | 2019-01-26 → 2019-02-02 (+7d) |  |  |  |
| 57 | Backend Delete Funktion | 2019-01-26 → 2019-02-02 (+7d) | 2019-01-27 → 2019-02-03 (+7d) |  |  |  |
| 58 | Frontend Delete Funktion | 2019-01-27 → 2019-02-03 (+7d) | 2019-01-28 → 2019-02-04 (+7d) |  |  |  |
| 59 | Coding Filler | 2019-01-28 → 2019-02-04 (+7d) | 2019-02-03 → 2019-02-10 (+7d) |  |  |  |
| 60 | Testfälle anwenden | 2019-02-03 → 2019-02-10 (+7d) | 2019-02-07 → 2019-02-14 (+7d) |  |  | resources none → Andreas Zweili |
| 62 | **Ausblick** | 2018-12-10 → 2019-02-15 (+67d) | 2018-12-11 → 2019-02-17 (+68d) |  |  |  |
| 63 | Gelerntes erfassen | 2018-12-10 → 2019-02-15 (+67d) | 2018-12-11 → 2019-02-17 (+68d) |  | none → 61 |  |
| 64 | Allgemeines Fazit | 2018-12-10 → 2019-02-17 (+69d) | 2018-12-10 → 2019-02-17 (+69d) |  | none → 63 |  |
| 65 | Risiken Anhand der Arbeit bewerten | 2018-12-10 → 2019-02-17 (+69d) | 2018-12-10 → 2019-02-17 (+69d) |  | none → 64 |  |
| 69 | Meeting abhalten |  |  |  |  | resources none → Andreas Zweili |
| 80 | Ausstellung vorbereiten |  |  |  |  | resources none → Andreas Zweili [33%] |

## Version 8 (saved 2018-12-24)

Note of the change: some more modifications

Last finish 2019-04-27 → 2019-04-28 (+1d).

Changed:

| ID | Task | Start | Finish | Duration |
| --- | --- | --- | --- | --- |
| 2 | **Initialisierung** |  | 2018-12-19 → 2018-12-21 (+2d) |  |
| 7 | Zeitplan erarbeiten |  | 2018-12-16 → 2018-12-17 (+1d) |  |
| 8 | **Controlling** | 2018-12-17 → 2018-12-18 (+1d) | 2018-12-19 → 2018-12-21 (+2d) |  |
| 9 | Zeitmanagement | 2018-12-17 → 2018-12-18 (+1d) | 2018-12-17 → 2018-12-18 (+1d) |  |
| 10 | Ressourcen | 2018-12-18 → 2018-12-19 (+1d) | 2018-12-18 → 2018-12-19 (+1d) |  |
| 11 | Kosten | 2018-12-19 → 2018-12-21 (+2d) | 2018-12-19 → 2018-12-21 (+2d) |  |
| 12 | Initialisierung abgeschlossen | 2018-12-19 → 2018-12-21 (+2d) | 2018-12-19 → 2018-12-21 (+2d) |  |
| 13 | **Analyse** | 2018-12-21 → 2018-12-22 (+1d) | 2018-12-30 → 2019-01-02 (+3d) |  |
| 14 | Ist-Analyse erstellen | 2018-12-21 → 2018-12-22 (+1d) | 2018-12-21 → 2018-12-22 (+1d) |  |
| 16 | SWOT Analyse erstellen |  | 2018-12-22 → 2018-12-23 (+1d) |  |
| 17 | Stakeholder Diagramm erstellen | 2018-12-22 → 2018-12-23 (+1d) | 2018-12-22 → 2018-12-23 (+1d) |  |
| 20 | Risiken bewerten |  | 2018-12-25 → 2018-12-26 (+1d) |  |
| 21 | Massnahmen Katalog erarbeiten | 2018-12-25 → 2018-12-26 (+1d) |  |  |
| 22 | User Stories erarbeiten |  | 2018-12-27 → 2018-12-28 (+1d) |  |
| 23 | **Use Cases erarbeiten** | 2018-12-27 → 2018-12-28 (+1d) | 2018-12-29 → 2018-12-30 (+1d) |  |
| 24 | Use Case Diagramm erstellen | 2018-12-27 → 2018-12-28 (+1d) |  |  |
| 25 | Use Cases ausarbeiten | 2018-12-28 → 2018-12-29 (+1d) | 2018-12-29 → 2018-12-30 (+1d) |  |
| 26 | Anforderungskatalog erstellen | 2018-12-29 → 2018-12-30 (+1d) | 2018-12-29 → 2018-12-30 (+1d) |  |
| 27 | UML | 2018-12-29 → 2018-12-30 (+1d) | 2018-12-30 → 2019-01-02 (+3d) |  |
| 28 | Analyse abgeschlossen | 2018-12-30 → 2019-01-02 (+3d) | 2018-12-30 → 2019-01-02 (+3d) |  |
| 29 | **Konzept** | 2018-12-30 → 2019-01-02 (+3d) | 2019-01-05 → 2019-01-10 (+5d) |  |
| 30 | **Lösungsvariante erarbeiten** | 2018-12-30 → 2019-01-02 (+3d) | 2019-01-03 → 2019-01-05 (+2d) |  |
| 31 | Lösungsvarianten erfassen | 2018-12-30 → 2019-01-02 (+3d) | 2018-12-31 → 2019-01-03 (+3d) |  |
| 32 | Lösungsvarianten bewerten | 2018-12-31 → 2019-01-03 (+3d) | 2019-01-02 → 2019-01-04 (+2d) |  |
| 33 | Lösungsvariante bestimmen | 2019-01-02 → 2019-01-04 (+2d) | 2019-01-03 → 2019-01-05 (+2d) |  |
| 34 | **Testing** | 2019-01-03 → 2019-01-05 (+2d) | 2019-01-05 → 2019-01-10 (+5d) |  |
| 35 | Testkonzept beschreiben | 2019-01-03 → 2019-01-05 (+2d) | 2019-01-03 → 2019-01-06 (+3d) |  |
| 36 | Testfälle erstellen | 2019-01-04 → 2019-01-06 (+2d) | 2019-01-05 → 2019-01-10 (+5d) |  |
| 37 | Konzeptionierung abgeschlossen | 2019-01-05 → 2019-01-10 (+5d) | 2019-01-05 → 2019-01-10 (+5d) |  |
| 38 | **Realisierung** | 2019-01-05 → 2019-01-11 (+6d) | 2019-02-14 → 2019-03-02 (+16d) |  |
| 39 | Github Repository erstellen | 2019-01-05 → 2019-01-11 (+6d) | 2019-01-05 → 2019-01-11 (+6d) |  |
| 40 | **UI** | 2019-01-05 → 2019-01-13 (+8d) | 2019-01-14 → 2019-01-20 (+6d) |  |
| 41 | UI ausarbeiten | 2019-01-05 → 2019-01-13 (+8d) | 2019-01-06 → 2019-01-14 (+8d) |  |
| 42 | UI Test ausarbeiten | 2019-01-06 → 2019-01-14 (+8d) | 2019-01-09 → 2019-01-16 (+7d) |  |
| 43 | UI von Usern testen lassen | 2019-01-10 → 2019-01-17 (+7d) | 2019-01-13 → 2019-01-19 (+6d) |  |
| 44 | UI Test Resultate auswerten | 2019-01-13 → 2019-01-19 (+6d) | 2019-01-13 → 2019-01-19 (+6d) |  |
| 45 | UI anpassen | 2019-01-13 → 2019-01-19 (+6d) | 2019-01-14 → 2019-01-20 (+6d) |  |
| 46 | **Coding** | 2019-01-14 → 2019-01-20 (+6d) | 2019-02-10 → 2019-02-24 (+14d) |  |
| 47 | Backend Read Config Funktion | 2019-01-14 → 2019-01-20 (+6d) | 2019-01-15 → 2019-01-21 (+6d) |  |
| 48 | Frontend Read Config Funktion | 2019-01-16 → 2019-01-22 (+6d) | 2019-01-19 → 2019-01-25 (+6d) |  |
| 49 | Backend Write Config Funktion | 2019-01-19 → 2019-01-26 (+7d) | 2019-01-20 → 2019-01-27 (+7d) |  |
| 50 | Frontend Write Config Funktion | 2019-01-20 → 2019-01-27 (+7d) | 2019-01-21 → 2019-01-28 (+7d) |  |
| 51 | Backend Backup Funktion | 2019-01-21 → 2019-01-28 (+7d) | 2019-01-22 → 2019-01-31 (+9d) |  |
| 52 | Frontend Backup Funktion | 2019-01-23 → 2019-02-01 (+9d) | 2019-01-26 → 2019-02-02 (+7d) |  |
| 53 | Backend Restore Funktion | 2019-01-26 → 2019-02-03 (+8d) | 2019-01-27 → 2019-02-04 (+8d) |  |
| 54 | Frontend Restore Funktion | 2019-01-27 → 2019-02-04 (+8d) | 2019-01-28 → 2019-02-06 (+9d) |  |
| 55 | Backend Mounting Funktion | 2019-01-28 → 2019-02-07 (+10d) | 2019-01-29 → 2019-02-09 (+11d) |  |
| 56 | Frontend Mounting Funktion | 2019-01-30 → 2019-02-09 (+10d) | 2019-02-02 → 2019-02-10 (+8d) |  |
| 57 | Backend Delete Funktion | 2019-02-02 → 2019-02-11 (+9d) | 2019-02-03 → 2019-02-12 (+9d) |  |
| 58 | Frontend Delete Funktion | 2019-02-03 → 2019-02-13 (+10d) | 2019-02-04 → 2019-02-17 (+13d) |  |
| 59 | Coding Filler | 2019-02-04 → 2019-02-17 (+13d) | 2019-02-10 → 2019-02-24 (+14d) |  |
| 60 | Testfälle anwenden | 2019-02-10 → 2019-02-25 (+15d) | 2019-02-14 → 2019-03-02 (+16d) |  |
| 61 | Realisierung abgeschlossen | 2019-02-14 → 2019-03-02 (+16d) | 2019-02-14 → 2019-03-02 (+16d) |  |
| 62 | **Ausblick** | 2019-02-15 → 2019-03-03 (+16d) | 2019-02-17 → 2019-03-04 (+15d) |  |
| 63 | Gelerntes erfassen | 2019-02-15 → 2019-03-03 (+16d) | 2019-02-17 → 2019-03-03 (+14d) |  |
| 64 | Allgemeines Fazit | 2019-02-17 → 2019-03-03 (+14d) | 2019-02-17 → 2019-03-03 (+14d) |  |
| 65 | Risiken Anhand der Arbeit bewerten | 2019-02-17 → 2019-03-04 (+15d) | 2019-02-17 → 2019-03-04 (+15d) |  |
| 66 | Ausblick abgeschlossen | 2019-02-17 → 2019-03-04 (+15d) | 2019-02-17 → 2019-03-04 (+15d) |  |
| 68 | **Meeting #1** |  |  | 1.38d → 1.12d |
| 71 | **Meeting #2** |  |  | 1.38d → 1.12d |
| 79 | **Ausstellung** |  | 2019-04-26 → 2019-04-28 (+2d) |  |
| 80 | Ausstellung vorbereiten |  | 2019-04-26 → 2019-04-28 (+2d) |  |
